# COMPONEN TECH

How a schedule from MS Project changed from version to version. A marks actual dates.

## Version 1 (saved 2021-03-04)

Note of the change: docs: gantt en MS Project

| ID | WBS | Task | Duration | Start | Finish | Complete | Total float | Constraint |
| --- | --- | --- | --- | --- | --- | --- | --- | --- |
| 1 | 1 | **ANALISIS** | 51d? | 2020-04-21 A | 2020-06-30 A | 100% |  |  |
| 2 |  | Componente metodológico | 7d | 2020-04-21 A | 2020-04-30 A | 100% |  | finish no earlier than 2020-04-30 |
| 3 |  | tecnicas de levantamiento de fm | 5d? | 2020-05-04 A | 2020-05-08 A | 100% |  | start no earlier than 2020-05-04 |
| 4 |  | mapa de procesos | 5d? | 2020-05-11 A | 2020-05-15 A | 100% |  | start no earlier than 2020-05-11 |
| 5 |  | control de versiones | 3d? | 2020-05-18 A | 2020-05-20 A | 100% |  | start no earlier than 2020-05-18 |
| 6 |  | requerimientos | 4d? | 2020-06-01 A | 2020-06-04 A | 100% |  | start no earlier than 2020-06-01 |
| 7 |  | casos de uso | 7d? | 2020-06-22 A | 2020-06-30 A | 100% |  | start no earlier than 2020-06-22 |
| 8 | 2 | **diseño** | 65d? | 2020-07-06 A | 2020-10-02 A | 100% |  | start no earlier than 2020-07-03 |
| 9 |  | modelo entidad relacion | 5d? | 2020-07-06 A | 2020-07-10 A | 100% |  | start no earlier than 2020-07-06 |
| 10 |  | diccionario de datos | 5d? | 2020-07-13 A | 2020-07-17 A | 100% |  | start no earlier than 2020-07-13 |
| 11 |  | MER | 5d? | 2020-07-20 A | 2020-07-24 A | 100% |  | start no earlier than 2020-07-20 |
| 12 |  | cronograma | 5d? | 2020-07-27 A | 2020-07-31 A | 100% |  | start no earlier than 2020-07-27 |
| 13 |  | diagrama de distribuccion | 2d | 2020-08-10 A | 2020-08-11 A | 100% |  | start no earlier than 2020-08-10 |
| 14 |  | diagrama de clases | 6d? | 2020-08-24 A | 2020-08-31 A | 100% |  | start no earlier than 2020-08-24 |
| 15 |  | prototipo | 11d? | 2020-09-01 A | 2020-09-15 A | 100% |  | start no earlier than 2020-09-01 |
| 16 |  | normalizacion del modelo entidad | 2d | 2020-10-01 A | 2020-10-02 A | 100% |  | start no earlier than 2020-10-01 |
| 17 | 3 | **DESARROLLO** | 72d? | 2020-10-19 A | 2021-01-26 | 80% | 16d | start no earlier than 2020-10-12 |
| 18 |  | contruccion de bd | 5d | 2020-10-19 A | 2020-10-23 A | 100% |  | start no earlier than 2020-10-19 |
| 19 |  | consultas de bd | 3d? | 2020-11-02 A | 2020-11-04 | 50% | 168.38d | start no earlier than 2020-11-02 |
| 20 |  | prototipo no funcional | 10d | 2020-11-23 A | 2020-12-04 | 75% | 146.38d | start no earlier than 2020-11-23 |
| 21 |  | inventario | 2d? | 2021-01-04 A | 2021-01-05 A | 100% |  | start no earlier than 2021-01-04 |
| 22 |  | informe de costos | 2d? | 2021-01-25 A | 2021-01-26 | 75% | 109.38d | start no earlier than 2021-01-25 |
| 23 | 4 | **Pruebas** | 13d? | 2021-02-01 A | 2021-02-17 | 71% | 0d | start no earlier than 2021-02-01 |
| 24 |  | pruebas caja negra y blanca | 4d? | 2021-02-01 A | 2021-02-04 A | 100% |  | start no earlier than 2021-02-01 |
| 25 |  | manual de instalacion | 3d? | 2021-02-08 A | 2021-02-10 A | 100% |  | start no earlier than 2021-02-08 |
| 26 |  | pruebas unitarias | 3d? | 2021-02-15 A | 2021-02-17 A | 100% |  | start no earlier than 2021-02-15 |
| 27 |  | Manual tecnico | 1d? | 2021-02-01 | 2021-02-01 |  |  |  |
| 28 |  | Diagrama de distribución | 1d? | 2021-02-01 | 2021-02-01 |  |  |  |
| 29 |  | Informe de migración | 1d? | 2021-02-01 | 2021-02-01 |  |  |  |
| 30 |  | Plan de instalación | 1d? | 2021-02-01 | 2021-02-01 |  |  |  |
| 31 | 5 | **Implementación** | 1d? | 2020-04-01 | 2020-04-01 |  |  |  |
| 32 |  | Cuadro comparativo de proveedores | 1d? | 2020-04-01 | 2020-04-01 |  |  |  |
| 33 |  | Contrato de desarrollo de software | 1d? | 2020-04-01 | 2020-04-01 |  |  |  |
| 34 |  | Documentación de las pruebas | 1d? | 2020-04-01 | 2020-04-01 |  |  |  |
| 35 |  | Modelo de calidad | 1d? | 2020-04-01 | 2020-04-01 |  |  |  |
| 36 |  | Manual de usuario | 1d? | 2020-04-01 | 2020-04-01 |  |  |  |
| 37 |  | Manual de operación | 1d? | 2020-04-01 | 2020-04-01 |  |  |  |

## Version 2 (saved 2021-03-07)

Note of the change: chore: actualización de correo de registro

Last finish 2021-02-17 → 2021-08-12 (+176d). Complete tasks 19 → 20.

Added:

| ID | Task | Duration | Start | Finish | Predecessors |
| --- | --- | --- | --- | --- | --- |
| 35 | **Trimestre 6** | 67d? | 2021-05-12 | 2021-08-12 | 31 |

Changed:

| ID | Task | Start | Finish | Duration | Complete | Total float | Predecessors | Other |
| --- | --- | --- | --- | --- | --- | --- | --- | --- |
| 3 | tecnicas de levantamiento de fm |  |  |  |  |  | none → 2 |  |
| 4 | mapa de procesos |  |  |  |  |  | none → 3 |  |
| 5 | control de versiones |  |  |  |  |  | none → 4 |  |
| 6 | requerimientos |  |  |  |  |  | none → 5 |  |
| 7 | casos de uso |  |  |  |  |  | none → 6 |  |
| 8 | **diseño** |  |  |  |  |  | none → 1 |  |
| 10 | diccionario de datos |  |  |  |  |  | none → 9 |  |
| 11 | MER |  |  |  |  |  | none → 10 |  |
| 12 | cronograma |  |  |  |  |  | none → 11 |  |
| 13 | diagrama de distribuccion |  |  |  |  |  | none → 12 |  |
| 14 | diagrama de clases |  |  |  |  |  | none → 13 |  |
| 15 | prototipo |  |  |  |  |  | none → 14 |  |
| 16 | normalizacion del modelo entidad |  |  |  |  |  | none → 15 |  |
| 17 | **DESARROLLO** |  |  |  | 80% → 85% | 16d → 3d | none → 8 |  |
| 19 | consultas de bd |  |  |  | 50% → 70% | 168.38d → 19.5d | none → 18 |  |
| 20 | prototipo no funcional |  |  |  |  | 146.38d → 40d | none → 19 |  |
| 21 | inventario |  |  |  |  |  | none → 20 |  |
| 22 | informe de costos |  | 2021-01-26 A |  | 75% → 100% | 109.38d → none | none → 21 |  |
| 23 | **Pruebas** |  | 2021-02-17 → 2021-03-12 (+23d) | 13d? → 29.5d? | 71% → 42% | 0d → none | none → 17 |  |
| 25 | manual de instalacion |  |  |  |  |  | none → 24 |  |
| 26 | pruebas unitarias |  |  |  |  |  | none → 25 |  |
| 27 | Manual tecnico | 2021-02-01 → 2021-02-22 (+21d) | 2021-02-01 → 2021-02-25 (+24d) | 1d? → 4d |  | none → 109.38d | none → 26 | constraint none → start no earlier than 2021-02-21 |
| 28 | Diagrama de distribución | 2021-02-01 → 2021-02-26 (+25d) | 2021-02-01 → 2021-03-02 (+29d) | 1d? → 3d |  | none → 109.38d | none → 27 | constraint none → start no earlier than 2021-02-21 |
| 29 | Informe de migración | 2021-02-01 → 2021-03-03 (+30d) | 2021-02-01 → 2021-03-08 (+35d) | 1d? → 4d |  | none → 109.38d | none → 28 | constraint none → start no earlier than 2021-02-16 |
| 30 | Plan de instalación | 2021-02-01 → 2021-03-09 (+36d) | 2021-02-01 → 2021-03-11 (+38d) | 1d? → 3d |  | none → 109.38d | none → 29 |  |
| 31 | **Implementación** | 2020-04-01 → 2021-03-12 (+345d) | 2020-04-01 → 2021-05-12 (+406d) | 1d? → 43.62d? |  |  |  |  |
| 32 | Cuadro comparativo de proveedores | 2020-04-01 → 2021-03-12 (+345d) | 2020-04-01 → 2021-03-19 (+352d) | 1d? → 6d |  | none → 89.38d |  |  |
| 33 | Contrato de desarrollo de software | 2020-04-01 → 2021-03-29 (+362d) | 2020-04-01 → 2021-04-01 (+365d) | 1d? → 4d |  | none → 89.38d | none → 32 | constraint none → start no earlier than 2021-03-29 |
| 34 | Documentación de las pruebas | 2020-04-01 → 2021-04-19 (+383d) | 2020-04-01 → 2021-04-23 (+387d) | 1d? → 5d |  | none → 78.38d | none → 33 | constraint none → start no earlier than 2021-04-19 |
| 36 | Modelo de calidad | 2020-04-01 → 2021-05-12 (+406d) | 2020-04-01 → 2021-05-17 (+411d) | 1d? → 4d |  | none → 52.38d |  |  |
| 37 | Manual de usuario | 2020-04-01 → 2021-05-31 (+425d) | 2020-04-01 → 2021-06-03 (+428d) | 1d? → 4d |  | none → 43.38d | none → 36 | constraint none → start no earlier than 2021-05-31 |
| 38 | Manual de operación | 2020-04-01 → 2021-07-12 (+467d) | 2020-04-01 → 2021-07-19 (+474d) | 1d? → 6d |  | none → 17.38d | none → 37 | constraint none → start no earlier than 2021-07-12 |

## Version 3 (saved 2021-03-26)

Note of the change: docs: actualización de gantt

Last finish stays 2021-08-12. Complete tasks 20 → 2.

Removed: 11 MER

Changed:

| ID | Task | Start | Finish | Duration | Complete | Total float | Predecessors | Other |
| --- | --- | --- | --- | --- | --- | --- | --- | --- |
| 1 | **Análisis** |  | 2020-06-30 A → 2020-06-25 (-5d) | 51d? → 48d | 100% → 95% | none → 6d |  | was named ANALISIS; resources Computador 1; Computador 2; Computador 3; Computador 4; Jhon Monroy; Kevin Cendales; Marlon Jaramillo; Yeren Palacios → none |
| 2 | Componente metodológico |  | 2020-04-30 A → 2020-04-22 (-8d) | 7d → 2d | 100% → 99% | none → 10d |  | resources none → Computador 1 [95%]; Computador 2 [95%]; Computador 3 [95%]; Computador 4 [95%]; Jhon Monroy; Kevin Cendales; Marlon Jaramillo; Yeren Palacios; Electricidad [95%]; Internet [95%] |
| 3 | Tecnicas de levantamiento de información |  | 2020-05-08 A → 2020-05-06 (-2d) | 5d? → 3d | 100% → 99% | none → 4d |  | was named tecnicas de levantamiento de fm; resources none → Computador 1 [95%]; Computador 2 [95%]; Computador 3 [95%]; Computador 4 [95%]; Jhon Monroy; Kevin Cendales; Marlon Jaramillo; Yeren Palacios; Electricidad [95%]; Internet [95%] |
| 4 | Mapa de procesos |  | 2020-05-15 A → 2020-05-12 (-3d) | 5d? → 2d | 100% → 99% | none → 6d |  | was named mapa de procesos; resources none → Computador 1 [95%]; Computador 2 [95%]; Computador 3 [95%]; Computador 4 [95%]; Jhon Monroy; Kevin Cendales; Marlon Jaramillo; Yeren Palacios; Electricidad [95%]; Internet [95%] |
| 5 | Control de versiones |  | 2020-05-20 A → 2020-05-20 | 3d? → 3d | 100% → 99% | none → 11d |  | was named control de versiones; resources none → Computador 1 [95%]; Computador 2 [95%]; Computador 3 [95%]; Computador 4 [95%]; Jhon Monroy; Kevin Cendales; Marlon Jaramillo; Yeren Palacios; Electricidad [95%]; Internet [95%] |
| 6 | Requerimientos |  | 2020-06-04 A → 2020-06-05 (+1d) | 4d? → 5d | 100% → 80% | none → 14d |  | was named requerimientos; resources none → Computador 1 [95%]; Computador 2 [95%]; Computador 3 [95%]; Computador 4 [95%]; Jhon Monroy; Kevin Cendales; Marlon Jaramillo; Yeren Palacios; Electricidad [95%]; Internet [95%] |
| 7 | Casos de uso |  | 2020-06-30 A → 2020-06-25 (-5d) | 7d? → 4d | 100% → 99% | none → 6d |  | was named casos de uso; resources none → Computador 1 [95%]; Computador 2 [95%]; Computador 3 [95%]; Computador 4 [95%]; Jhon Monroy; Kevin Cendales; Marlon Jaramillo; Yeren Palacios; Electricidad [95%]; Internet [95%] |
| 8 | **Diseño** |  | 2020-10-02 A → 2020-10-05 (+3d) | 65d? → 66d | 100% → 87% | none → 9d |  | was named diseño; resources Computador 1; Computador 2; Computador 3; Computador 4; Jhon Monroy; Kevin Cendales; Marlon Jaramillo; Yeren Palacios → none |
| 9 | Modelo entidad relacion |  | 2020-07-10 A → 2020-07-10 | 5d? → 5d | 100% → 99% | none → 1d |  | was named modelo entidad relacion; resources none → Computador 1 [95%]; Computador 2 [95%]; Computador 3 [95%]; Computador 4 [95%]; Jhon Monroy; Kevin Cendales; Marlon Jaramillo; Yeren Palacios; Electricidad [95%]; Internet [95%] |
| 10 | Diccionario de datos |  | 2020-07-17 A → 2020-07-13 (-4d) | 5d? → 1d | 100% → 99% | none → 11d |  | was named diccionario de datos; resources none → Computador 1 [95%]; Computador 2 [95%]; Computador 3 [95%]; Computador 4 [95%]; Jhon Monroy; Kevin Cendales; Marlon Jaramillo; Yeren Palacios; Electricidad [95%]; Internet [95%] |
| 11 | Cronograma |  | 2020-07-31 A → 2020-07-28 (-3d) | 5d? → 2d | 100% → 99% | none → 10d | MER → 10 | was named cronograma; resources none → Computador 1 [95%]; Computador 2 [95%]; Computador 3 [95%]; Computador 4 [95%]; Jhon Monroy; Kevin Cendales; Marlon Jaramillo; Yeren Palacios; Electricidad [95%]; Internet [95%] |
| 12 | Diagrama de distribuccion |  | 2020-08-11 A → 2020-08-13 (+2d) | 2d → 4d | 100% → 50% | none → 11d |  | was named diagrama de distribuccion; resources none → Computador 1 [95%]; Computador 2 [95%]; Computador 3 [95%]; Computador 4 [95%]; Jhon Monroy; Kevin Cendales; Marlon Jaramillo; Yeren Palacios; Electricidad [95%]; Internet [95%] |
| 13 | Diagrama de clases |  | 2020-08-31 A → 2020-08-28 (-3d) | 6d? → 5d | 100% → 99% | none → 4d |  | was named diagrama de clases; resources none → Computador 1 [95%]; Computador 2 [95%]; Computador 3 [95%]; Computador 4 [95%]; Jhon Monroy; Kevin Cendales; Marlon Jaramillo; Yeren Palacios; Electricidad [95%]; Internet [95%] |
| 14 | Prototipo |  | 2020-09-15 A → 2020-09-03 (-12d) | 11d? → 3d | 100% → 99% | none → 21d |  | was named prototipo; resources none → Computador 1 [95%]; Computador 2 [95%]; Computador 3 [95%]; Computador 4 [95%]; Jhon Monroy; Kevin Cendales; Marlon Jaramillo; Yeren Palacios; Electricidad [95%]; Internet [95%] |
| 15 | Normalizacion del modelo entidad |  | 2020-10-02 A → 2020-10-05 (+3d) | 2d → 3d | 100% → 67% | none → 9d |  | was named normalizacion del modelo entidad; resources none → Computador 1 [95%]; Computador 2 [95%]; Computador 3 [95%]; Computador 4 [95%]; Jhon Monroy; Kevin Cendales; Marlon Jaramillo; Yeren Palacios; Electricidad [95%]; Internet [95%] |
| 16 | **Desarrollo** |  | 2021-01-26 → 2021-01-25 (-1d) | 72d? → 71d | 85% → 95% | 3d → 5d |  | was named DESARROLLO; resources Computador 1; Computador 2; Computador 3; Computador 4; Jhon Monroy; Kevin Cendales; Marlon Jaramillo; Yeren Palacios → none |
| 17 | Contruccion de bd |  | 2020-10-23 A → 2020-10-21 (-2d) | 5d → 3d | 100% → 99% | none → 10d |  | was named contruccion de bd; resources none → Computador 1 [95%]; Computador 2 [95%]; Computador 3 [95%]; Computador 4 [95%]; Jhon Monroy; Kevin Cendales; Marlon Jaramillo; Yeren Palacios; Electricidad [95%]; Internet [95%] |
| 18 | Consultas de bd |  | 2020-11-04 → 2020-11-05 (+1d) | 3d? → 4d | 70% → 75% | 19.5d → 21d |  | was named consultas de bd; resources none → Computador 1 [95%]; Computador 2 [95%]; Computador 3 [95%]; Computador 4 [95%]; Jhon Monroy; Kevin Cendales; Marlon Jaramillo; Yeren Palacios; Electricidad [95%]; Internet [95%] |
| 19 | Prototipo no funcional |  |  |  | 75% → 99% | 40d → 21d |  | was named prototipo no funcional; resources none → Computador 1 [95%]; Computador 2 [95%]; Computador 3 [95%]; Computador 4 [95%]; Jhon Monroy; Kevin Cendales; Marlon Jaramillo; Yeren Palacios; Electricidad [95%]; Internet [95%] |
| 20 | Inventario |  | 2021-01-05 A → 2021-01-04 (-1d) | 2d? → 1d | 100% → 99% | none → 15d |  | was named inventario; resources none → Computador 1 [95%]; Computador 2 [95%]; Computador 3 [95%]; Computador 4 [95%]; Jhon Monroy; Kevin Cendales; Marlon Jaramillo; Yeren Palacios; Electricidad [95%]; Internet [95%] |
| 21 | Informe de costos |  | 2021-01-26 A → 2021-01-25 (-1d) | 2d? → 1d | 100% → 99% | none → 5d |  | was named informe de costos; resources none → Computador 1 [95%]; Computador 2 [95%]; Computador 3 [95%]; Computador 4 [95%]; Jhon Monroy; Kevin Cendales; Marlon Jaramillo; Yeren Palacios; Electricidad [95%]; Internet [95%] |
| 22 | **Pruebas** | 2021-02-01 A → 2021-02-02 A (+1d) | 2021-03-12 → 2021-03-23 (+11d) | 29.5d? → 35.62d? | 42% → 35% |  |  |  |
| 23 | Pruebas caja negra y blanca | 2021-02-01 A → 2021-02-02 A (+1d) |  | 4d? → 3d |  |  |  | was named pruebas caja negra y blanca; resources none → Computador 1 [95%]; Computador 2 [95%]; Computador 3 [95%]; Computador 4 [95%]; Jhon Monroy; Kevin Cendales; Marlon Jaramillo; Yeren Palacios; Electricidad [95%]; Internet [95%] |
| 24 | Manual de instalacion |  | 2021-02-10 A → 2021-02-09 A (-1d) | 3d? → 2d |  |  |  | was named manual de instalacion; resources none → Computador 1 [95%]; Computador 2 [95%]; Computador 3 [95%]; Computador 4 [95%]; Jhon Monroy; Kevin Cendales; Marlon Jaramillo; Yeren Palacios; Electricidad [95%]; Internet [95%] |
| 25 | Pruebas unitarias |  | 2021-02-17 A → 2021-02-17 |  | 100% → 99% | none → 110.38d |  | was named pruebas unitarias; resources none → Computador 1 [95%]; Computador 2 [95%]; Computador 3 [95%]; Computador 4 [95%]; Jhon Monroy; Kevin Cendales; Marlon Jaramillo; Yeren Palacios; Electricidad [95%]; Internet [95%] |
| 26 | Manual tecnico |  | 2021-02-25 → 2021-02-26 (+1d) | 4d → 5d |  | 109.38d → 108.38d |  | resources none → Computador 1 [95%]; Computador 2 [95%]; Computador 3 [95%]; Computador 4 [95%]; Jhon Monroy; Kevin Cendales; Marlon Jaramillo; Yeren Palacios; Electricidad [95%]; Internet [95%] |
| 27 | Diagrama de distribución | 2021-02-26 → 2021-03-01 (+3d) | 2021-03-02 → 2021-03-03 (+1d) |  |  | 109.38d → 108.38d |  | resources none → Computador 1 [95%]; Computador 2 [95%]; Computador 3 [95%]; Computador 4 [95%]; Jhon Monroy; Kevin Cendales; Marlon Jaramillo; Yeren Palacios; Electricidad [95%]; Internet [95%] |
| 28 | Informe de migración | 2021-03-03 → 2021-03-04 (+1d) | 2021-03-08 → 2021-03-09 (+1d) |  |  | 109.38d → 108.38d |  | resources none → Computador 1 [95%]; Computador 2 [95%]; Computador 3 [95%]; Computador 4 [95%]; Jhon Monroy; Kevin Cendales; Marlon Jaramillo; Yeren Palacios; Electricidad [95%]; Internet [95%] |
| 29 | Plan de instalación | 2021-03-09 → 2021-03-10 (+1d) | 2021-03-11 → 2021-03-12 (+1d) |  |  | 109.38d → 108.38d |  | resources none → Computador 1 [95%]; Computador 2 [95%]; Computador 3 [95%]; Computador 4 [95%]; Jhon Monroy; Kevin Cendales; Marlon Jaramillo; Yeren Palacios; Electricidad [95%]; Internet [95%] |
| 30 | **Implementación** |  | 2021-05-12 → 2021-05-11 (-1d) | 43.62d? → 43d |  |  |  |  |
| 31 | Cuadro comparativo de proveedores |  | 2021-03-19 → 2021-03-16 (-3d) | 6d → 3d |  | 89.38d → 98.38d |  | resources none → Computador 1 [95%]; Computador 2 [95%]; Computador 3 [95%]; Computador 4 [95%]; Jhon Monroy; Kevin Cendales; Marlon Jaramillo; Yeren Palacios; Electricidad [95%]; Internet [95%] |
| 32 | Contrato de desarrollo de software |  | 2021-04-01 → 2021-03-30 (-2d) | 4d → 2d |  | 89.38d → 92.38d |  | resources none → Computador 1 [95%]; Computador 2 [95%]; Computador 3 [95%]; Computador 4 [95%]; Jhon Monroy; Kevin Cendales; Marlon Jaramillo; Yeren Palacios; Electricidad [95%]; Internet [95%] |
| 33 | Documentación de las pruebas |  | 2021-04-23 → 2021-04-22 (-1d) | 5d → 4d |  | 78.38d → 79.38d |  | resources none → Computador 1 [95%]; Computador 2 [95%]; Computador 3 [95%]; Computador 4 [95%]; Jhon Monroy; Kevin Cendales; Marlon Jaramillo; Yeren Palacios; Electricidad [95%]; Internet [95%] |
| 34 | **Trimestre 6** |  |  | 67d? → 67d |  |  |  |  |
| 35 | Modelo de calidad |  | 2021-05-17 → 2021-05-14 (-3d) | 4d → 3d |  | 52.38d → 58.38d |  | resources none → Computador 1 [95%]; Computador 2 [95%]; Computador 3 [95%]; Computador 4 [95%]; Jhon Monroy; Kevin Cendales; Marlon Jaramillo; Yeren Palacios; Electricidad [95%]; Internet [95%] |
| 36 | Manual de usuario |  | 2021-06-03 → 2021-06-02 (-1d) | 4d → 3d |  | 43.38d → 48.38d |  | resources none → Computador 1 [95%]; Computador 2 [95%]; Computador 3 [95%]; Computador 4 [95%]; Jhon Monroy; Kevin Cendales; Marlon Jaramillo; Yeren Palacios; Electricidad [95%]; Internet [95%] |
| 37 | Manual de operación |  | 2021-07-19 → 2021-07-13 (-6d) | 6d → 2d |  | 17.38d → 21.38d |  | resources none → Computador 1 [95%]; Computador 2 [95%]; Computador 3 [95%]; Computador 4 [95%]; Jhon Monroy; Kevin Cendales; Marlon Jaramillo; Yeren Palacios; Electricidad [95%]; Internet [95%] |
